Schedule from MS Project, 2020-12-13 to 2021-04-09, costs in zł, A marks actual dates.

## Calendars

- Standard: Mon-Fri 08:00-16:00; Sat-Sun off. Exceptions (off unless hours are given): 2021-01-01 (Nowy rok, recurring), 2021-01-06 (Trzech Króli, recurring), 2021-04-05 (Drugi dzień Wielkiej nocy, recurring).

## Resources

| Resource | Group | Unit | Rate |
| --- | --- | --- | --- |
| Stefan Team lead | Pracownicy |  | 35 |
| Janusz Marketing manager | Pracownicy |  | 25 |
| Jeff Elektronik | Pracownicy |  | 24 |
| Kamil Mechanik | Pracownicy |  | 22 |
| Oskar Programista wysokopoziomowy | Pracownicy |  | 26 |
| Tomasz Programista aplikacji mobilnych | Pracownicy |  | 26 |
| Krzysztof Logistyk | Pracownicy |  | 19 |
| Części do testów |  | kpl | 100 |
| Wynajem biura |  |  |  |
| Marketing |  |  |  |
| Licencje oprogramowania |  | szt | 1000 |
| Produkcja |  |  |  |
| Magazynowanie |  |  |  |
| Druk płytki |  | kpl | 50 |

## Schedule

| ID | WBS | Task | Type | Duration | Start | Finish | Predecessors | Complete | Baseline start | Baseline finish | Baseline duration | Resources | Work | Actual work | Cost | Baseline cost | Actual cost |
| --- | --- | --- | --- | --- | --- | --- | --- | --- | --- | --- | --- | --- | --- | --- | --- | --- | --- |
| 1 | 1 | **Stałe koszta** |  | 82d | 2020-12-13 A | 2021-04-09 A |  | 100% | 2020-11-23 | 2021-03-02 | 70d | Wynajem biura [0.1%] | 2704h | 2704h | 83,160.5 | 72,682 | 83,160.5 |
| 2 | 1.1 | **Planowanie projektu** |  | 82d | 2020-12-13 A | 2021-04-09 A |  | 100% | 2020-11-23 | 2021-03-02 | 70d |  | 2704h | 2704h | 68,160.5 | 57,682 | 68,160.5 |
| 3 | 1.1.1 | Przegląd podobych rozwiązań |  | 4d | 2020-12-13 A | 2020-12-17 A |  | 100% | 2020-11-23 | 2020-11-26 | 4d | Janusz Marketing manager; Jeff Elektronik; Kamil Mechanik; Krzysztof Logistyk; Oskar Programista wysokopoziomowy; Stefan Team lead; Tomasz Programista aplikacji mobilnych | 224h | 224h | 5,664 | 5,664 | 5,664 |
| 4 | 1.1.2 | Próba dopasowania się do konkurencji |  | 4d | 2020-12-17 A | 2020-12-23 A | 3 | 100% | 2020-11-27 | 2020-12-02 | 4d | Stefan Team lead; Janusz Marketing manager | 64h | 64h | 1,920 | 1,920 | 1,920 |
| 5 | 1.1.3 | Przeanalizowanie współpracy czujników |  | 3d | 2020-12-24 A | 2020-12-28 A | 4 | 100% | 2020-12-03 | 2020-12-07 | 3d | Jeff Elektronik; Kamil Mechanik; Części do testów [1 kpl] | 48h | 48h | 1,204 | 1,204 | 1,204 |
| 6 | 1.1.4 | Rozwiązanie techniczne doświetlania rośliny |  | 4d | 2020-12-29 A | 2021-01-04 A | 5 | 100% | 2020-12-08 | 2020-12-11 | 4d | Jeff Elektronik; Kamil Mechanik; Części do testów [1 kpl] | 64h | 64h | 1,572 | 1,572 | 1,572 |
| 7 | 1.1.5 | Planowanie projektu ukończone | milestone | 0d | 2021-01-04 A | 2021-01-04 A | 6 | 100% | 2020-12-11 | 2020-12-11 |  |  |  |  |  |  |  |
| 8 | 1.1.6 | **Realizowanie projektu** |  | 63d | 2021-01-12 A | 2021-04-09 A |  | 100% | 2020-12-14 | 2021-03-02 | 55d |  | 2304h | 2304h | 57,800.5 | 47,322 | 57,800.5 |
| 9 | 1.1.6.1 | Stworzenie schematu elektrycznego projektu |  | 5d | 2021-01-12 A | 2021-01-18 A | 7 | 100% | 2020-12-14 | 2020-12-17 | 4d | Jeff Elektronik; Kamil Mechanik | 80h | 80h | 1,840 | 1,472 | 1,840 |
| 10 | 1.1.6.2 | Testowanie poprawności działania czujników |  | 4d | 2021-01-19 A | 2021-01-22 A | 9 | 100% | 2020-12-18 | 2020-12-22 | 3d | Jeff Elektronik; Kamil Mechanik; Części do testów [3 kpl] | 64h | 64h | 1,772 | 1,304 | 1,772 |
| 11 | 1.1.6.3 | Implementacja komunikacji z modułem ESP8266 |  | 6d | 2021-01-22 A | 2021-01-29 A | 10 | 100% | 2020-12-23 | 2020-12-30 | 6d | Jeff Elektronik; Kamil Mechanik; Części do testów [1 kpl] | 96h | 96h | 2,308 | 2,308 | 2,308 |
| 12 | 1.1.6.4 | Tworzenie aplikacji do komunikacji |  | 14d | 2021-01-19 A | 2021-02-06 A | 9 | 100% | 2020-12-18 | 2021-01-12 | 16d | Oskar Programista wysokopoziomowy; Części do testów [1 kpl] | 112h | 112h | 3,012 | 3,428 | 3,012 |
| 13 | 1.1.6.5 | Tworzenie aplikacji zajmującej się identyfikacją rodzaju rośliny |  | 20d | 2021-01-19 A | 2021-02-15 A | 9 | 100% | 2020-12-18 | 2021-01-14 | 18d | Tomasz Programista aplikacji mobilnych | 160h | 160h | 4,160 | 3,744 | 4,160 |
| 14 | 1.1.6.6 | Realizacja montażu systemu doświetlania |  | 2d | 2021-02-01 A | 2021-02-02 A | 11 | 100% | 2020-12-31 | 2021-01-04 | 2d | Jeff Elektronik; Kamil Mechanik | 32h | 32h | 736 | 736 | 736 |
| 15 | 1.1.6.7 | Realizacja połączeń elektrycznych na płytce stykowej |  | 3d | 2021-02-03 A | 2021-02-05 A | 14 | 100% | 2021-01-05 | 2021-01-07 | 2d | Jeff Elektronik; Kamil Mechanik; Części do testów [2 kpl] | 48h | 48h | 1,304 | 836 | 1,304 |
| 16 | 1.1.6.8 | Przeniesienie projektu na płytkę uniwersalną |  | 4d | 2021-02-05 A | 2021-02-10 A | 15 | 100% | 2021-01-08 | 2021-01-11 | 2d | Jeff Elektronik; Kamil Mechanik; Części do testów [2 kpl]; Druk płytki [2 kpl] | 64h | 64h | 1,772 | 886 | 1,772 |
| 17 | 1.1.6.9 | Zaprojektowanie własnej płytki |  | 4d | 2021-02-09 A | 2021-02-12 A | 16 | 100% | 2021-01-12 | 2021-01-21 | 8d | Jeff Elektronik; Kamil Mechanik; Części do testów [0.75 kpl]; Druk płytki [0.75 kpl] | 64h | 64h | 1,584.5 | 3,094 | 1,584.5 |
| 18 | 1.1.6.10 | Połączenie systemu wykrywania rośliny i systemu zarządzania |  | 2d | 2021-02-16 A | 2021-02-17 A | 12, 13 | 100% | 2021-01-15 | 2021-01-18 | 2d | Oskar Programista wysokopoziomowy; Tomasz Programista aplikacji mobilnych | 32h | 32h | 832 | 832 | 832 |
| 19 | 1.1.6.11 | Przygotowanie obudowy i instrukcji użytkowania |  | 4d | 2021-02-15 A | 2021-02-18 A | 17 | 100% | 2021-01-22 | 2021-01-28 | 5d | Jeff Elektronik; Kamil Mechanik; Części do testów [0.8 kpl]; Druk płytki [0.8 kpl] | 64h | 64h | 1,592 | 1,990 | 1,592 |
| 20 | 1.1.6.12 | Planowanie i realizacja produkcji |  | 11d | 2021-02-22 A | 2021-03-08 A | 18, 19 | 100% | 2021-01-29 | 2021-02-05 | 6d | Jeff Elektronik; Kamil Mechanik; Krzysztof Logistyk; Magazynowanie [0.1%]; Produkcja [0.1%] | 264h | 264h | 5,720 | 3,120 | 5,720 |
| 21 | 1.1.6.13 | Realizowanie projektu ukończone | milestone | 0d | 2021-03-08 A | 2021-03-08 A | 20 | 100% | 2021-02-05 | 2021-02-05 |  |  |  |  |  |  |  |
| 22 | 1.1.6.14 | **Monitorowanie projektu** |  | 24d | 2021-03-08 A | 2021-04-09 A |  | 100% | 2021-02-08 | 2021-03-02 | 17d |  | 1224h | 1224h | 31,168 | 23,572 | 31,168 |
| 23 | 1.1.6.14.1 | Testowanie produktu przez użytkowników pre-orderowych |  | 15d | 2021-03-08 A | 2021-03-26 A | 21 | 100% | 2021-02-08 | 2021-02-25 | 14d | Części do testów [2 kpl] |  |  | 200 | 100 | 200 |
| 24 | 1.1.6.14.2 | Marketing |  | 15d | 2021-03-09 A | 2021-03-29 A | 21 | 100% | 2021-02-08 | 2021-02-25 | 14d | Janusz Marketing manager | 120h | 120h | 3,000 | 2,800 | 3,000 |
| 25 | 1.1.6.14.3 | Ostateczne poprawy błędów |  | 23d | 2021-03-09 A | 2021-04-09 A | 20 | 100% | 2021-02-08 | 2021-03-02 | 17d | Jeff Elektronik; Kamil Mechanik; Krzysztof Logistyk; Oskar Programista wysokopoziomowy; Stefan Team lead; Tomasz Programista aplikacji mobilnych | 1104h | 1104h | 27,968 | 20,672 | 27,968 |
